How a schedule from a web Gantt chart changed from version to version. A marks actual dates.

## Version 1 (saved 2024-07-10)

| ID | WBS | Task | Duration | Start | Finish | Predecessors | Complete |
| --- | --- | --- | --- | --- | --- | --- | --- |
| 2 |  | Align with CLT about ASME cal. report/FEA report requirement | 2d | 2024-05-27 | 2024-05-28 |  | 100% |
| 3 |  | Design Requirements Alignment Between YLC and CLT | 15d | 2024-05-27 | 2024-06-14 |  |  |
| 4 | 3 | **FEA Part** | 29d | 2024-05-29 | 2024-07-08 | 2 |  |
| 5 |  | FEA Work | 1d | 2024-05-29 | 2024-05-29 |  |  |
| 6 |  | 1st FEA for XR7 FrC Condenser | 5d | 2024-05-29 | 2024-06-04 | 2 |  |
| 7 |  | 1st FEA for XR7 FrB Cooler | 5d | 2024-06-05 | 2024-06-11 | 6 |  |
| 8 |  | 2nd FEA for XR7 FrC Condenser due to shell thickness change | 4d | 2024-06-12 | 2024-06-17 | 7 |  |
| 9 |  | 1st FEA Report for XR7 FrC Condenser(CLT Review) | 8d | 2024-06-18 | 2024-06-27 | 8 |  |
| 10 |  | 2nd FEA for XR7 FrB Cooler due to shell thickness change | 3d | 2024-06-28 | 2024-07-02 | 9 |  |
| 11 |  | 3rd FEA for XR7 FrC Condenser due to TS thickness change | 3d | 2024-07-03 | 2024-07-05 | 10 |  |
| 12 |  | 3rd FEA for XR7 FrB Cooler due to TS thickness change | 3d | 2024-07-03 | 2024-07-05 | 10 |  |
| 13 |  | 1st FEA Report for XR7 FrB Cooler | 4d | 2024-07-03 | 2024-07-08 | 9, 10 |  |
| 14 |  | 2nd FEA Report for XR7 FrC Condenser | 4d | 2024-07-03 | 2024-07-08 | 9, 10 |  |
| 15 | 4 | **PV Part** | 31d | 2024-05-29 | 2024-07-10 |  |  |
| 16 |  | Check New Economizer Design with ASME Compress | 11d | 2024-05-29 | 2024-06-12 | 2 |  |
| 17 |  | 1st ASME Cal Report for XR7 Condenser/Cooler/Float Box(No Dwg) | 11d | 2024-05-29 | 2024-06-12 | 2 |  |
| 18 |  | 2nd ASME Cal Report for XR7 Condenser/Cooler/Economizer/Float Box(Shell thickness change) | 9d | 2024-06-13 | 2024-06-25 | 17 |  |
| 19 |  | 3rd ASME Cal Report for XR7 Condenser/Cooler/Economizer/Float Box(YLC Comments) | 9d | 2024-06-26 | 2024-07-08 | 18 |  |
| 20 |  | 4th ASME Cal Report for XR7 Condenser/Cooler/Economizer/Float Box(YLC Dwg) | 2d | 2024-07-09 | 2024-07-10 | 19 |  |
| 21 |  | 1st ASME Dwg Review for XR7 Condenser/Cooler/Economizer/Float Box | 4d | 2024-07-05 | 2024-07-10 |  |  |

## Version 2 (saved 2024-07-10)

Last finish 2024-07-10 → 2024-07-17 (+7d). Complete tasks 1 → 17.

Added:

| ID | Task | Duration | Start | Finish |
| --- | --- | --- | --- | --- |
| 14 | Update FEA Report After AI Review | 3d | 2024-07-15 | 2024-07-17 |
| 22 | Update ASME Cal Report After AI Review | 3d | 2024-07-15 | 2024-07-17 |

Removed: 5 FEA Work

Changed:

| ID | Task | Start | Finish | Duration | Complete | Predecessors |
| --- | --- | --- | --- | --- | --- | --- |
| 3 | Design Requirements Alignment Between YLC and CLT | 2024-05-27 → 2024-05-29 (+2d) | 2024-06-14 → 2024-06-18 (+4d) |  | 0% → 100% | none → 2 |
| 4 | **FEA Part** |  | 2024-07-08 → 2024-07-17 (+9d) | 29d → 36d | 0% → 93% | 2 → none |
| 5 | 1st FEA for XR7 FrC Condenser |  |  |  | 0% → 100% |  |
| 6 | 1st FEA for XR7 FrB Cooler |  |  |  | 0% → 100% |  |
| 7 | 2nd FEA for XR7 FrC Condenser due to shell thickness change |  |  |  | 0% → 100% |  |
| 8 | 1st FEA Report for XR7 FrC Condenser(CLT Review) |  |  |  | 0% → 100% |  |
| 9 | 2nd FEA for XR7 FrB Cooler due to shell thickness change |  |  |  | 0% → 100% |  |
| 10 | 3rd FEA for XR7 FrC Condenser due to TS thickness change |  |  |  | 0% → 100% |  |
| 11 | 3rd FEA for XR7 FrB Cooler due to TS thickness change |  |  |  | 0% → 100% |  |
| 12 | 1st FEA Report for XR7 FrB Cooler |  |  |  | 0% → 100% |  |
| 13 | 2nd FEA Report for XR7 FrC Condenser |  |  |  | 0% → 100% |  |
| 15 | **PV Part** |  | 2024-07-10 → 2024-07-17 (+7d) | 31d → 36d | 0% → 94% |  |
| 16 | Check New Economizer Design with ASME Compress |  |  |  | 0% → 100% |  |
| 17 | 1st ASME Cal Report for XR7 Condenser/Cooler/Float Box(No Dwg) |  |  |  | 0% → 100% |  |
| 18 | 2nd ASME Cal Report for XR7 Condenser/Cooler/Economizer/Float Box(Shell thickness change) |  |  |  | 0% → 100% |  |
| 19 | 3rd ASME Cal Report for XR7 Condenser/Cooler/Economizer/Float Box(YLC Comments) |  |  |  | 0% → 100% |  |
| 20 | 4th ASME Cal Report for XR7 Condenser/Cooler/Economizer/Float Box(YLC Dwg) |  |  |  | 0% → 100% |  |
| 21 | 1st ASME Dwg Review for XR7 Condenser/Cooler/Economizer/Float Box |  |  |  | 0% → 100% |  |

## Version 3 (saved 2024-07-17)

Last finish 2024-07-17 → 2024-07-19 (+2d).

Changed:

| ID | Task | Finish | Duration | Complete |
| --- | --- | --- | --- | --- |
| 4 | **FEA Part** | 2024-07-17 → 2024-07-19 (+2d) | 36d → 38d | 93% → 89% |
| 14 | Update FEA Report After AI Review | 2024-07-17 → 2024-07-19 (+2d) | 3d → 5d |  |
| 15 | **PV Part** | 2024-07-17 → 2024-07-19 (+2d) | 36d → 38d | 94% → 90% |
| 22 | Update ASME Cal Report After AI Review | 2024-07-17 → 2024-07-19 (+2d) | 3d → 5d |  |
